# SSI My Wedding Planner

Schedule from MS Project, 2015-12-04 to 2016-08-25, status date 2016-04-30, costs in $.

## Calendars

- Standard: Mon-Fri 08:00-12:00, 13:00-17:00; Sat-Sun off.

## Resources

| Resource | Unit | Notes |
| --- | --- | --- |
| Bride |  |  |
| Groom |  |  |
| Wedding rings | ring |  |
| Photographer |  | Jack recommends both photography and videography, but we may be restricted by budget. |
| Bridesmaid 1 |  |  |
| Bridesmaid 2 |  |  |
| Wedding venue |  |  |
| Reception venue |  |  |
| Catering |  |  |
| Flowers |  |  |
| Cake |  |  |
| Entertainment |  |  |
| Bride's attire |  |  |
| Stationery |  |  |
| Bridesmaids' attire |  |  |
| Honeymoon cost |  |  |
| Groom's attire |  |  |
| Best Man's attire |  |  |

## Schedule

| ID | WBS | Task | Type | Duration | Start | Finish | Predecessors | Total slack | Free slack | Constraint | Resources | Work | Cost |
| --- | --- | --- | --- | --- | --- | --- | --- | --- | --- | --- | --- | --- | --- |
| 2 | 1 | Agree budget and approach |  | 10d | 2015-12-04 | 2015-12-17 |  | 0d |  |  | Bride; Groom | 160h |  |
| 4 | 2 | Set wedding date |  | 1d | 2016-02-23 | 2016-02-23 | 25, 47 | 0d |  |  |  |  |  |
| 5 | 3 | Wedding date set | milestone | 0d | 2016-02-23 | 2016-02-23 | 4 | 0d |  |  |  |  |  |
| 7 | 4 | **PREPARATION PHASE** |  | 169d | 2015-12-18 | 2016-08-10 |  | 0d | 5d |  |  | 1985.6h | 34,330 |
| 8 | 4.1 | **Attire** |  | 123d | 2016-01-08 | 2016-06-28 | 2 | 0d | 36d |  |  | 476h | 7,600 |
| 9 | 4.1.1 | **Select and order wedding dress** |  | 104d | 2016-01-08 | 2016-06-01 |  | 0d | 3d |  |  | 108h | 4,100 |
| 10 | 4.1.1.1 | Select wedding dress |  | 40d | 2016-01-08 | 2016-03-03 |  | 0d |  |  | Bride [20%] | 64h |  |
| 11 | 4.1.1.2 | Order dress |  | 1d | 2016-03-23 | 2016-03-23 | 10 | 0d |  |  | Bride [50%]; Bride's attire [0.1%] | 4h | 4,100 |
| 12 | 4.1.1.3 | Measurements and fittings |  | 50d | 2016-03-24 | 2016-06-01 | 11 | 0d | 39d |  | Bride [10%] | 40h |  |
| 13 | 4.1.2 | Select and order bridesmaid dresses |  | 70d | 2016-03-01 | 2016-06-06 | 10FS-5d | 0d |  | start no earlier than 2016-03-01 | Bridesmaid 1 [20%]; Bride [10%]; Bridesmaid 2 [20%]; Bridesmaids' attire [0.1%] | 280h | 1,600 |
| 14 | 4.1.3 | Select and order groom tuxedo |  | 40d | 2016-03-23 | 2016-05-17 |  | 0d |  |  | Bride [20%]; Groom's attire [0.1%] | 64h | 1,100 |
| 15 | 4.1.4 | Select and order best man tuxedo |  | 30d | 2016-05-18 | 2016-06-28 | 14 | 36d |  |  | Best Man's attire; Groom [10%] | 24h | 800 |
| 16 | 4.1.5 | All attire ordered | milestone | 0d | 2016-06-06 | 2016-06-06 | 9, 13, 14 | 52d |  |  |  |  |  |
| 17 | 4.2 | **Guests** |  | 109d | 2015-12-18 | 2016-05-18 | 2 | 0d | 65d |  |  | 380h | 520 |
| 18 | 4.2.1 | Make Guest List |  | 15d | 2015-12-18 | 2016-01-07 |  | 0d |  |  | Bride; Groom | 240h |  |
| 19 | 4.2.2 | Send out invitations |  | 20d | 2016-02-24 | 2016-03-22 | 18SS+5d, 4 | 0d |  |  | Groom [50%]; Stationery [0.1%] | 80h | 520 |
| 20 | 4.2.3 | Finalize Guest List |  | 5d | 2016-05-05 | 2016-05-11 | 19FF+15d | 49d | 0d |  | Bride [50%]; Groom [50%] | 40h |  |
| 21 | 4.2.4 | Guest List finalized | milestone | 0d | 2016-05-11 | 2016-05-11 | 20 | 70d | 91d |  |  |  |  |
| 22 | 4.2.5 | Book guest accommodation |  | 5d | 2016-05-12 | 2016-05-18 | 20 | 65d | 86d |  | Groom [50%] | 20h |  |
| 23 | 4.3 | **Reception Venue** |  | 94d | 2016-01-08 | 2016-05-18 | 2 | 0d | 49d |  |  | 144h | 6,950 |
| 24 | 4.3.1 | Make reception venue short list |  | 15d | 2016-01-08 | 2016-01-28 |  | 0d |  |  | Bride [50%]; Groom [50%] | 120h |  |
| 25 | 4.3.2 | Book reception venue |  | 1d | 2016-02-19 | 2016-02-19 | 24 | 0d |  |  | Bride [50%]; Reception venue [0.1%] | 4h | 6,950 |
| 26 | 4.3.3 | Reception venue booked | milestone | 0d | 2016-02-19 | 2016-02-19 | 25 | 0d |  |  |  |  |  |
| 27 | 4.3.4 | Plan and finalize seating arrangements |  | 5d | 2016-05-12 | 2016-05-18 | 20 | 49d | 70d |  | Bride [50%] | 20h |  |

Notes:
- 13: Jane out of country until March 1 2016
- 19: Josh Tranter on 555-2198 is a friend of Petra and makes excellent custom invitations.

| ID | WBS | Task | Type | Duration | Start | Finish | Predecessors | Total slack | Free slack | Constraint | Deadline | Resources | Work | Cost |
| --- | --- | --- | --- | --- | --- | --- | --- | --- | --- | --- | --- | --- | --- | --- |
| 28 | 4.4 | **Catering** |  | 124d | 2016-01-08 | 2016-06-29 | 2 | 0d | 35d |  |  |  | 240h | 5,550 |
| 29 | 4.4.1 | Make caterer short list |  | 23.5d | 2016-01-08 | 2016-02-10 |  | 0d |  |  |  | Groom [50%]; Bride [10%] | 72h |  |
| 30 | 4.4.2 | Book caterer and finalize menu |  | 15d | 2016-03-02 | 2016-03-22 | 29 | 0d |  | start no earlier than 2016-01-31 |  | Bride [20%]; Groom [20%]; Catering [0.1%] | 48h | 5,100 |
| 31 | 4.4.3 | Make baker short list |  | 15d | 2016-05-19 | 2016-06-08 |  | 35d | 0d |  |  | Groom [50%]; Bride [10%] | 72h |  |
| 32 | 4.4.4 | Select baker and order cake |  | 15d | 2016-06-09 | 2016-06-29 | 31 | 35d |  |  |  | Bride [20%]; Groom [20%]; Cake [0.1%] | 48h | 450 |
| 33 | 4.5 | **Flowers** |  | 30d | 2016-06-09 | 2016-07-20 | 2 | 20d |  |  |  |  | 120h | 750 |
| 34 | 4.5.1 | Make florist short list |  | 15d | 2016-06-09 | 2016-06-29 |  | 20d | 0d |  |  | Groom [50%]; Bride [10%] | 72h |  |
| 35 | 4.5.2 | Select florist and order flowers |  | 15d | 2016-06-30 | 2016-07-20 | 34 | 20d |  |  |  | Bride [20%]; Groom [20%]; Flowers [0.1%] | 48h | 750 |
| 36 | 4.6 | **Memories** |  | 30d | 2016-03-24 | 2016-05-04 | 2 | 0d | 75d |  |  |  | 120h | 1,500 |
| 37 | 4.6.1 | Make photographer short list |  | 15d | 2016-03-24 | 2016-04-13 |  | 0d |  |  |  | Bride [50%]; Groom [10%] | 72h |  |
| 38 | 4.6.2 | Select and book photographer |  | 15d | 2016-04-14 | 2016-05-04 | 37 | 75d |  |  |  | Photographer [0.1%]; Bride [20%]; Groom [20%] | 48h | 1,500 |
| 39 | 4.7 | **Details** |  | 80d | 2016-02-24 | 2016-06-14 | 2 | 0d | 46d |  |  |  | 224h | 1,960 |
| 40 | 4.7.1 | Select and buy rings |  | 20d | 2016-05-18 | 2016-06-14 |  | 46d |  |  |  | Wedding rings [0 ring]; Bride [20%]; Groom [20%] | 64h | 1,000 |
| 41 | 4.7.2 | Select and book entertainment |  | 20d | 2016-02-24 | 2016-03-22 | 5 | 0d |  |  |  | Bride [50%]; Groom [20%]; Entertainment [0.1%] | 112h | 900 |
| 42 | 4.7.3 | Select and book transport |  | 10d | 2016-05-19 | 2016-06-01 | 5 | 55d |  |  |  | Bride [20%]; Groom [20%] | 32h |  |
| 43 | 4.7.4 | Register wedding and get license |  | 5d | 2016-02-24 | 2016-03-01 | 5 | 0d |  |  |  | Groom [20%]; Bride [20%] | 16h | 60 |
| 44 | 4.7.5 | Wedding registered and licensed | milestone | 0d | 2016-03-01 | 2016-03-01 | 43 | 0d |  |  |  |  |  |  |
| 45 | 4.8 | **Wedding Venue** |  | 17d | 2016-01-29 | 2016-02-22 | 2 | 0d |  |  |  |  | 121.6h | 4,500 |
| 46 | 4.8.1 | Make wedding venue short list |  | 15d | 2016-01-29 | 2016-02-18 |  | 0d |  |  |  | Bride [50%]; Groom [50%] | 120h |  |
| 47 | 4.8.2 | Book wedding venue |  | 1d | 2016-02-22 | 2016-02-22 | 46 | 0d |  |  |  | Bride [20%]; Wedding venue [0.1%] | 1.6h | 4,500 |
| 48 | 4.8.3 | Wedding venue booked | milestone | 0d | 2016-02-22 | 2016-02-22 | 47 | 0d |  |  |  |  |  |  |
| 49 | 4.9 | **Honeymoon** |  | 30d | 2016-06-30 | 2016-08-10 |  | 5d |  |  |  |  | 160h | 5,000 |
| 50 | 4.9.1 | Make honeymoon destination short list |  | 20d | 2016-06-30 | 2016-07-27 | 2 | 5d | 0d |  |  | Bride [40%]; Groom [40%] | 128h |  |
| 51 | 4.9.2 | Select honeymoon destination and book honeymoon |  | 10d | 2016-07-28 | 2016-08-10 | 50 | 5d |  |  |  | Bride [20%]; Groom [20%]; Honeymoon cost [0.1%] | 32h | 5,000 |
| 53 | 5 | Rehearsal |  | 1d | 2016-08-16 | 2016-08-16 | 54SS-7d | 7d |  |  |  | Bride; Groom | 16h |  |
| 54 | 6 | Wedding day | milestone | 1d | 2016-08-25 | 2016-08-25 | 7FS+5d | 0d |  | must start on 2016-08-25 | 2016-09-01 | Bride; Groom | 16h |  |
