# SSI Wedding 03

Schedule from MS Project, 2015-12-04 to 2016-05-23.

## Calendars

- Standard: Mon-Fri 08:00-12:00, 13:00-17:00; Sat-Sun off.

## Schedule

| ID | WBS | Task | Type | Duration | Start | Finish | Predecessors | Total slack | Free slack | Constraint |
| --- | --- | --- | --- | --- | --- | --- | --- | --- | --- | --- |
| 2 | 1 | Agree budget and approach |  | 10d | 2015-12-04 | 2015-12-17 |  | 17d | 0d |  |
| 4 | 2 | Set wedding date |  | 1d | 2016-01-11 | 2016-01-11 | 23, 45 | 55d | 0d |  |
| 5 | 3 | Wedding date set | milestone | 0d | 2016-01-11 | 2016-01-11 | 4 | 95d |  |  |
| 7 | 4 | **Attire** |  | 112d | 2015-12-18 | 2016-05-23 | 2 | 0d |  |  |
| 8 | 4.1 | **Select and order wedding dress** |  | 81d | 2015-12-18 | 2016-04-08 |  | 17d |  |  |
| 9 | 4.1.1 | Select wedding dress |  | 40d | 2015-12-18 | 2016-02-11 |  | 17d | 0d |  |
| 10 | 4.1.2 | Order dress |  | 1d | 2016-02-12 | 2016-02-12 | 9 | 31d | 0d |  |
| 11 | 4.1.3 | Measurements and fittings |  | 40d | 2016-02-15 | 2016-04-08 | 10 | 31d |  |  |
| 12 | 4.2 | Select and order bridesmaid dresses |  | 60d | 2016-03-01 | 2016-05-23 | 9FS-5d | 0d |  | start no earlier than 2016-03-01 |
| 13 | 4.3 | Select and order groom tuxedo |  | 30d | 2015-12-18 | 2016-01-28 |  | 82d |  |  |
| 14 | 4.4 | All attire ordered | milestone | 0d | 2016-05-23 | 2016-05-23 | 8, 12, 13 | 0d |  |  |
| 15 | 5 | **Guests** |  | 57d | 2015-12-18 | 2016-03-07 | 2 | 55d |  |  |
| 16 | 5.1 | Make Guest List |  | 15d | 2015-12-18 | 2016-01-07 |  | 67d | 12d |  |
| 17 | 5.2 | Send out invitations |  | 20d | 2016-01-12 | 2016-02-08 | 16SS+5d, 4 | 55d | 0d |  |
| 18 | 5.3 | Finalize Guest List |  | 5d | 2016-02-23 | 2016-02-29 | 17FF+15d | 55d | 0d |  |
| 19 | 5.4 | Guest List finalized | milestone | 0d | 2016-02-29 | 2016-02-29 | 18 | 60d |  |  |
| 20 | 5.5 | Book guest accommodation |  | 5d | 2016-03-01 | 2016-03-07 | 18 | 55d |  |  |
| 21 | 6 | **Reception Venue** |  | 57d | 2015-12-18 | 2016-03-07 | 2 | 55d |  |  |
| 22 | 6.1 | Make reception venue short list |  | 15d | 2015-12-18 | 2016-01-07 |  | 55d | 0d |  |
| 23 | 6.2 | Book reception venue |  | 1d | 2016-01-08 | 2016-01-08 | 22 | 55d | 0d |  |
| 24 | 6.3 | Reception venue booked | milestone | 0d | 2016-01-08 | 2016-01-08 | 23 | 96d |  |  |
| 25 | 6.4 | Plan and finalize seating arrangements |  | 5d | 2016-03-01 | 2016-03-07 | 18 | 55d |  |  |
| 26 | 7 | **Catering** |  | 30d | 2015-12-18 | 2016-01-28 | 2 | 82d |  |  |
| 27 | 7.1 | Make caterer short list |  | 15d | 2015-12-18 | 2016-01-07 |  | 82d | 0d |  |
| 28 | 7.2 | Book caterer and finalize menu |  | 15d | 2016-01-08 | 2016-01-28 | 27 | 82d |  |  |
| 29 | 7.3 | Make baker short list |  | 15d | 2015-12-18 | 2016-01-07 |  | 82d | 0d |  |
| 30 | 7.4 | Select baker and order cake |  | 15d | 2016-01-08 | 2016-01-28 | 29 | 82d |  |  |

Notes:
- 12: Jane out of country until March 1 2016

| ID | WBS | Task | Type | Duration | Start | Finish | Predecessors | Total slack | Free slack | Deadline |
| --- | --- | --- | --- | --- | --- | --- | --- | --- | --- | --- |
| 31 | 8 | **Flowers** |  | 30d | 2015-12-18 | 2016-01-28 | 2 | 82d |  |  |
| 32 | 8.1 | Make florist short list |  | 15d | 2015-12-18 | 2016-01-07 |  | 82d | 0d |  |
| 33 | 8.2 | Select florist and order flowers |  | 15d | 2016-01-08 | 2016-01-28 | 32 | 82d |  |  |
| 34 | 9 | **Memories** |  | 30d | 2015-12-18 | 2016-01-28 | 2 | 82d |  |  |
| 35 | 9.1 | Make photographer short list |  | 15d | 2015-12-18 | 2016-01-07 |  | 82d | 0d |  |
| 36 | 9.2 | Select and book photographer |  | 15d | 2016-01-08 | 2016-01-28 | 35 | 82d |  |  |
| 37 | 10 | **Details** |  | 20d | 2015-12-18 | 2016-01-14 | 2 | 92d |  |  |
| 38 | 10.1 | Select and buy rings |  | 20d | 2015-12-18 | 2016-01-14 |  | 92d |  |  |
| 39 | 10.2 | Select and book entertainment |  | 20d | 2015-12-18 | 2016-01-14 |  | 92d |  |  |
| 40 | 10.3 | Select and book transport |  | 10d | 2015-12-18 | 2015-12-31 |  | 102d |  |  |
| 41 | 10.4 | Register wedding and get license |  | 5d | 2015-12-18 | 2015-12-24 |  | 107d | 0d |  |
| 42 | 10.5 | Wedding registered and licensed | milestone | 0d | 2015-12-24 | 2015-12-24 | 41 | 107d |  |  |
| 43 | 11 | **Wedding Day** |  | 16d | 2015-12-18 | 2016-01-08 | 2 | 55d |  |  |
| 44 | 11.1 | Make wedding venue short list |  | 15d | 2015-12-18 | 2016-01-07 |  | 55d | 0d |  |
| 45 | 11.2 | Book wedding venue |  | 1d | 2016-01-08 | 2016-01-08 | 44 | 55d | 0d |  |
| 46 | 11.3 | Wedding venue booked | milestone | 0d | 2016-01-08 | 2016-01-08 | 45 | 96d |  |  |
| 47 | 11.4 | Rehearsal |  | 1d | 2015-12-18 | 2015-12-18 | 48SS-7d | 111d |  |  |
| 48 | 11.5 | Wedding day | milestone | 1d | 2015-12-18 | 2015-12-18 |  | 111d | 7d | 2016-09-01 |
| 49 | 12 | **Honeymoon** |  | 30d | 2015-12-18 | 2016-01-28 | 2 | 82d |  |  |
| 50 | 12.1 | Make honeymoon destination short list |  | 20d | 2015-12-18 | 2016-01-14 |  | 82d | 0d |  |
| 51 | 12.2 | Select honeymoon destination and book honeymoon |  | 10d | 2016-01-15 | 2016-01-28 | 50 | 82d |  |  |
