# SSI Wedding 06

Schedule from MS Project, 2015-12-04 to 2016-05-24, costs in $.

## Calendars

- Standard: Mon-Fri 08:00-12:00, 13:00-17:00; Sat-Sun off.

## Resources

| Resource | Unit | Rate |
| --- | --- | --- |
| Bride |  |  |
| Groom |  |  |
| Wedding ring | ring | 500 |
| Photographer |  |  |
| Bridesmaid 1 |  |  |
| Bridesmaid 2 |  |  |

## Schedule

| ID | WBS | Task | Type | Duration | Start | Finish | Predecessors | Total slack | Free slack | Constraint | Resources | Work | Cost |
| --- | --- | --- | --- | --- | --- | --- | --- | --- | --- | --- | --- | --- | --- |
| 2 | 1 | Agree budget and approach |  | 10d | 2015-12-04 | 2015-12-17 |  | 17d | 0d |  | Bride; Groom | 160h |  |
| 4 | 2 | Set wedding date |  | 1d | 2016-01-11 | 2016-01-11 | 24, 46 | 55d | 0d |  |  |  |  |
| 5 | 3 | Wedding date set | milestone | 0d | 2016-01-11 | 2016-01-11 | 4 | 96d |  |  |  |  |  |
| 7 | 4 | **PREPARATION PHASE** |  | 112d | 2015-12-18 | 2016-05-23 |  | 0d |  |  |  | 1897.6h | 2,500 |
| 8 | 4.1 | **Attire** |  | 112d | 2015-12-18 | 2016-05-23 | 2 | 0d |  |  |  | 388h |  |
| 9 | 4.1.1 | **Select and order wedding dress** |  | 81d | 2015-12-18 | 2016-04-08 |  | 17d |  |  |  | 100h |  |
| 10 | 4.1.1.1 | Select wedding dress |  | 40d | 2015-12-18 | 2016-02-11 |  | 17d | 0d |  | Bride [20%] | 64h |  |
| 11 | 4.1.1.2 | Order dress |  | 1d | 2016-02-12 | 2016-02-12 | 10 | 31d | 0d |  | Bride [50%] | 4h |  |
| 12 | 4.1.1.3 | Measurements and fittings |  | 40d | 2016-02-15 | 2016-04-08 | 11 | 31d |  |  | Bride [10%] | 32h |  |
| 13 | 4.1.2 | Select and order bridesmaid dresses |  | 60d | 2016-03-01 | 2016-05-23 | 10FS-5d | 0d |  | start no earlier than 2016-03-01 | Bridesmaid 1 [20%]; Bride [10%]; Bridesmaid 2 [20%] | 240h |  |
| 14 | 4.1.3 | Select and order groom tuxedo |  | 30d | 2015-12-18 | 2016-01-28 |  | 82d |  |  | Bride [20%] | 48h |  |
| 15 | 4.1.4 | All attire ordered | milestone | 0d | 2016-05-23 | 2016-05-23 | 9, 13, 14 | 0d |  |  |  |  |  |
| 16 | 4.2 | **Guests** |  | 57d | 2015-12-18 | 2016-03-07 | 2 | 55d |  |  |  | 380h |  |
| 17 | 4.2.1 | Make Guest List |  | 15d | 2015-12-18 | 2016-01-07 |  | 67d | 12d |  | Bride; Groom | 240h |  |
| 18 | 4.2.2 | Send out invitations |  | 20d | 2016-01-12 | 2016-02-08 | 17SS+5d, 4 | 55d | 0d |  | Groom [50%] | 80h |  |
| 19 | 4.2.3 | Finalize Guest List |  | 5d | 2016-02-23 | 2016-02-29 | 18FF+15d | 55d | 0d |  | Bride [50%]; Groom [50%] | 40h |  |
| 20 | 4.2.4 | Guest List finalized | milestone | 0d | 2016-02-29 | 2016-02-29 | 19 | 60d |  |  |  |  |  |
| 21 | 4.2.5 | Book guest accommodation |  | 5d | 2016-03-01 | 2016-03-07 | 19 | 55d |  |  | Groom [50%] | 20h |  |
| 22 | 4.3 | **Reception Venue** |  | 57d | 2015-12-18 | 2016-03-07 | 2 | 55d |  |  |  | 144h |  |
| 23 | 4.3.1 | Make reception venue short list |  | 15d | 2015-12-18 | 2016-01-07 |  | 55d | 0d |  | Bride [50%]; Groom [50%] | 120h |  |
| 24 | 4.3.2 | Book reception venue |  | 1d | 2016-01-08 | 2016-01-08 | 23 | 55d | 0d |  | Bride [50%] | 4h |  |
| 25 | 4.3.3 | Reception venue booked | milestone | 0d | 2016-01-08 | 2016-01-08 | 24 | 96d |  |  |  |  |  |
| 26 | 4.3.4 | Plan and finalize seating arrangements |  | 5d | 2016-03-01 | 2016-03-07 | 19 | 55d |  |  | Bride [50%] | 20h |  |
| 27 | 4.4 | **Catering** |  | 30d | 2015-12-18 | 2016-01-28 | 2 | 82d |  |  |  | 240h |  |
| 28 | 4.4.1 | Make caterer short list |  | 15d | 2015-12-18 | 2016-01-07 |  | 82d | 0d |  | Groom [50%]; Bride [10%] | 72h |  |
| 29 | 4.4.2 | Book caterer and finalize menu |  | 15d | 2016-01-08 | 2016-01-28 | 28 | 82d |  |  | Bride [20%]; Groom [20%] | 48h |  |
| 30 | 4.4.3 | Make baker short list |  | 15d | 2015-12-18 | 2016-01-07 |  | 82d | 0d |  | Groom [50%]; Bride [10%] | 72h |  |
| 31 | 4.4.4 | Select baker and order cake |  | 15d | 2016-01-08 | 2016-01-28 | 30 | 82d |  |  | Bride [20%]; Groom [20%] | 48h |  |

Notes:
- 13: Jane out of country until March 1 2016

| ID | WBS | Task | Type | Duration | Start | Finish | Predecessors | Total slack | Free slack | Deadline | Resources | Work | Cost |
| --- | --- | --- | --- | --- | --- | --- | --- | --- | --- | --- | --- | --- | --- |
| 32 | 4.5 | **Flowers** |  | 30d | 2015-12-18 | 2016-01-28 | 2 | 82d |  |  |  | 120h |  |
| 33 | 4.5.1 | Make florist short list |  | 15d | 2015-12-18 | 2016-01-07 |  | 82d | 0d |  | Groom [50%]; Bride [10%] | 72h |  |
| 34 | 4.5.2 | Select florist and order flowers |  | 15d | 2016-01-08 | 2016-01-28 | 33 | 82d |  |  | Bride [20%]; Groom [20%] | 48h |  |
| 35 | 4.6 | **Memories** |  | 30d | 2015-12-18 | 2016-01-28 | 2 | 82d |  |  |  | 120h | 1,500 |
| 36 | 4.6.1 | Make photographer short list |  | 15d | 2015-12-18 | 2016-01-07 |  | 82d | 0d |  | Bride [50%]; Groom [10%] | 72h |  |
| 37 | 4.6.2 | Select and book photographer |  | 15d | 2016-01-08 | 2016-01-28 | 36 | 82d |  |  | Photographer [0.1%]; Bride [20%]; Groom [20%] | 48h | 1,500 |
| 38 | 4.7 | **Details** |  | 20d | 2015-12-18 | 2016-01-14 | 2 | 92d |  |  |  | 224h | 1,000 |
| 39 | 4.7.1 | Select and buy rings |  | 20d | 2015-12-18 | 2016-01-14 |  | 92d |  |  | Wedding ring [2 ring]; Bride [20%]; Groom [20%] | 64h | 1,000 |
| 40 | 4.7.2 | Select and book entertainment |  | 20d | 2015-12-18 | 2016-01-14 |  | 92d |  |  | Bride [50%]; Groom [20%] | 112h |  |
| 41 | 4.7.3 | Select and book transport |  | 10d | 2015-12-18 | 2015-12-31 |  | 102d |  |  | Bride [20%]; Groom [20%] | 32h |  |
| 42 | 4.7.4 | Register wedding and get license |  | 5d | 2015-12-18 | 2015-12-24 |  | 107d | 0d |  | Groom [20%]; Bride [20%] | 16h |  |
| 43 | 4.7.5 | Wedding registered and licensed | milestone | 0d | 2015-12-24 | 2015-12-24 | 42 | 107d |  |  |  |  |  |
| 44 | 4.8 | **Wedding Venue** |  | 16d | 2015-12-18 | 2016-01-08 | 2 | 55d |  |  |  | 121.6h |  |
| 45 | 4.8.1 | Make wedding venue short list |  | 15d | 2015-12-18 | 2016-01-07 |  | 55d | 0d |  | Bride [50%]; Groom [50%] | 120h |  |
| 46 | 4.8.2 | Book wedding venue |  | 1d | 2016-01-08 | 2016-01-08 | 45 | 55d | 0d |  | Bride [20%] | 1.6h |  |
| 47 | 4.8.3 | Wedding venue booked | milestone | 0d | 2016-01-08 | 2016-01-08 | 46 | 96d |  |  |  |  |  |
| 48 | 4.9 | **Honeymoon** |  | 30d | 2015-12-18 | 2016-01-28 | 2 | 82d |  |  |  | 160h |  |
| 49 | 4.9.1 | Make honeymoon destination short list |  | 20d | 2015-12-18 | 2016-01-14 |  | 82d | 0d |  | Bride [40%]; Groom [40%] | 128h |  |
| 50 | 4.9.2 | Select honeymoon destination and book honeymoon |  | 10d | 2016-01-15 | 2016-01-28 | 49 | 82d |  |  | Bride [20%]; Groom [20%] | 32h |  |
| 52 | 5 | Rehearsal |  | 1d | 2016-05-13 | 2016-05-13 | 53SS-7d | 7d |  |  | Bride; Groom | 16h |  |
| 53 | 6 | Wedding day | milestone | 1d | 2016-05-24 | 2016-05-24 | 7 | 0d |  | 2016-09-01 | Bride; Groom | 16h |  |
