# SSI Wedding 07

Schedule from MS Project, 2015-12-04 to 2016-08-25, costs in $.

## Calendars

- Standard: Mon-Fri 08:00-12:00, 13:00-17:00; Sat-Sun off.

## Resources

| Resource | Unit |
| --- | --- |
| Bride |  |
| Groom |  |
| Wedding rings | ring |
| Photographer |  |
| Bridesmaid 1 |  |
| Bridesmaid 2 |  |
| Wedding venue |  |
| Reception venue |  |
| Catering |  |
| Flowers |  |
| Cake |  |
| Entertainment |  |
| Bride's attire |  |
| Stationery |  |
| Bridesmaids' attire |  |
| Honeymoon cost |  |
| Groom's attire |  |

## Schedule

| ID | WBS | Task | Type | Duration | Start | Finish | Predecessors | Total slack | Free slack | Constraint | Resources | Work | Cost |
| --- | --- | --- | --- | --- | --- | --- | --- | --- | --- | --- | --- | --- | --- |
| 2 | 1 | Agree budget and approach |  | 10d | 2015-12-04 | 2015-12-17 |  | 0d |  |  | Bride; Groom | 160h |  |
| 4 | 2 | Set wedding date |  | 1d | 2016-02-22 | 2016-02-22 | 24, 46 | 0d |  |  |  |  |  |
| 5 | 3 | Wedding date set | milestone | 0d | 2016-02-22 | 2016-02-22 | 4 | 40d | 0d |  |  |  |  |
| 7 | 4 | **PREPARATION PHASE** |  | 158d | 2015-12-18 | 2016-07-26 |  | 0d |  |  |  | 1897.6h | 30,750 |
| 8 | 4.1 | **Attire** |  | 97d | 2016-01-08 | 2016-05-23 | 2 | 46d |  |  |  | 388h | 6,300 |
| 9 | 4.1.1 | **Select and order wedding dress** |  | 93d | 2016-01-08 | 2016-05-17 |  | 48d | 4d |  |  | 100h | 3,600 |
| 10 | 4.1.1.1 | Select wedding dress |  | 40d | 2016-01-08 | 2016-03-03 |  | 48d | 0d |  | Bride [20%] | 64h |  |
| 11 | 4.1.1.2 | Order dress |  | 1d | 2016-03-22 | 2016-03-22 | 10 | 50d | 0d |  | Bride [50%]; Bridesmaids' attire [0.1%] | 4h | 3,600 |
| 12 | 4.1.1.3 | Measurements and fittings |  | 40d | 2016-03-23 | 2016-05-17 | 11 | 50d |  |  | Bride [10%] | 32h |  |
| 13 | 4.1.2 | Select and order bridesmaid dresses |  | 60d | 2016-03-01 | 2016-05-23 | 10FS-5d | 46d | 0d | start no earlier than 2016-03-01 | Bridesmaid 1 [20%]; Bride [10%]; Bridesmaid 2 [20%]; Bridesmaids' attire [0.1%] | 240h | 1,600 |
| 14 | 4.1.3 | Select and order groom tuxedo |  | 30d | 2016-03-23 | 2016-05-03 |  | 60d | 14d |  | Bride [20%]; Groom's attire [0.1%] | 48h | 1,100 |
| 15 | 4.1.4 | All attire ordered | milestone | 0d | 2016-05-23 | 2016-05-23 | 9, 13, 14 | 46d |  |  |  |  |  |
| 16 | 4.2 | **Guests** |  | 108d | 2015-12-18 | 2016-05-17 | 2 | 42d |  |  |  | 380h | 440 |
| 17 | 4.2.1 | Make Guest List |  | 15d | 2015-12-18 | 2016-01-07 |  | 42d |  |  | Bride; Groom | 240h |  |
| 18 | 4.2.2 | Send out invitations |  | 20d | 2016-02-23 | 2016-03-21 | 17SS+5d, 4 | 0d |  |  | Groom [50%]; Stationery [0.1%] | 80h | 440 |
| 19 | 4.2.3 | Finalize Guest List |  | 5d | 2016-05-04 | 2016-05-10 | 18FF+15d | 50d | 0d |  | Bride [50%]; Groom [50%] | 40h |  |
| 20 | 4.2.4 | Guest List finalized | milestone | 0d | 2016-05-10 | 2016-05-10 | 19 | 55d |  |  |  |  |  |
| 21 | 4.2.5 | Book guest accommodation |  | 5d | 2016-05-11 | 2016-05-17 | 19 | 50d |  |  | Groom [50%] | 20h |  |
| 22 | 4.3 | **Reception Venue** |  | 93d | 2016-01-08 | 2016-05-17 | 2 | 0d |  |  |  | 144h | 6,600 |
| 23 | 4.3.1 | Make reception venue short list |  | 15d | 2016-01-08 | 2016-01-28 |  | 0d |  |  | Bride [50%]; Groom [50%] | 120h |  |
| 24 | 4.3.2 | Book reception venue |  | 1d | 2016-02-19 | 2016-02-19 | 23 | 0d |  |  | Bride [50%]; Reception venue [0.1%] | 4h | 6,600 |
| 25 | 4.3.3 | Reception venue booked | milestone | 0d | 2016-02-19 | 2016-02-19 | 24 | 112d |  |  |  |  |  |
| 26 | 4.3.4 | Plan and finalize seating arrangements |  | 5d | 2016-05-11 | 2016-05-17 | 19 | 50d |  |  | Bride [50%] | 20h |  |
| 27 | 4.4 | **Catering** |  | 128d | 2016-01-08 | 2016-07-05 | 2 | 15d |  |  |  | 240h | 4,850 |
| 28 | 4.4.1 | Make caterer short list |  | 15d | 2016-01-08 | 2016-01-28 |  | 113d | 0d |  | Groom [50%]; Bride [10%] | 72h |  |
| 29 | 4.4.2 | Book caterer and finalize menu |  | 15d | 2016-01-29 | 2016-02-18 | 28 | 113d |  |  | Bride [20%]; Groom [20%]; Catering [0.1%] | 48h | 4,400 |
| 30 | 4.4.3 | Make baker short list |  | 15d | 2016-05-25 | 2016-06-14 |  | 15d | 0d |  | Groom [50%]; Bride [10%] | 72h |  |
| 31 | 4.4.4 | Select baker and order cake |  | 15d | 2016-06-15 | 2016-07-05 | 30 | 15d |  |  | Bride [20%]; Groom [20%]; Cake [0.1%] | 48h | 450 |

Notes:
- 13: Jane out of country until March 1 2016

| ID | WBS | Task | Type | Duration | Start | Finish | Predecessors | Total slack | Free slack | Deadline | Resources | Work | Cost |
| --- | --- | --- | --- | --- | --- | --- | --- | --- | --- | --- | --- | --- | --- |
| 32 | 4.5 | **Flowers** |  | 30d | 2016-04-13 | 2016-05-24 | 2 | 45d |  |  |  | 120h | 750 |
| 33 | 4.5.1 | Make florist short list |  | 15d | 2016-04-13 | 2016-05-03 |  | 45d | 0d |  | Groom [50%]; Bride [10%] | 72h |  |
| 34 | 4.5.2 | Select florist and order flowers |  | 15d | 2016-05-04 | 2016-05-24 | 33 | 45d |  |  | Bride [20%]; Groom [20%]; Flowers [0.1%] | 48h | 750 |
| 35 | 4.6 | **Memories** |  | 30d | 2016-03-23 | 2016-05-03 | 2 | 60d |  |  |  | 120h | 1,500 |
| 36 | 4.6.1 | Make photographer short list |  | 15d | 2016-03-23 | 2016-04-12 |  | 60d | 0d |  | Bride [50%]; Groom [10%] | 72h |  |
| 37 | 4.6.2 | Select and book photographer |  | 15d | 2016-04-13 | 2016-05-03 | 36 | 60d |  |  | Photographer [0.1%]; Bride [20%]; Groom [20%] | 48h | 1,500 |
| 38 | 4.7 | **Details** |  | 81d | 2016-02-23 | 2016-06-14 | 2 | 30d |  |  |  | 224h | 1,810 |
| 39 | 4.7.1 | Select and buy rings |  | 20d | 2016-05-18 | 2016-06-14 |  | 30d |  |  | Wedding rings [0 ring]; Bride [20%]; Groom [20%] | 64h | 1,000 |
| 40 | 4.7.2 | Select and book entertainment |  | 20d | 2016-02-23 | 2016-03-21 | 5 | 91d |  |  | Bride [50%]; Groom [20%]; Entertainment [0.1%] | 112h | 750 |
| 41 | 4.7.3 | Select and book transport |  | 10d | 2016-05-18 | 2016-05-31 | 5 | 40d |  |  | Bride [20%]; Groom [20%] | 32h |  |
| 42 | 4.7.4 | Register wedding and get license |  | 5d | 2016-02-23 | 2016-02-29 | 5 | 106d | 0d |  | Groom [20%]; Bride [20%] | 16h | 60 |
| 43 | 4.7.5 | Wedding registered and licensed | milestone | 0d | 2016-02-29 | 2016-02-29 | 42 | 106d |  |  |  |  |  |
| 44 | 4.8 | **Wedding Venue** |  | 16d | 2016-01-29 | 2016-02-19 | 2 | 0d |  |  |  | 121.6h | 3,500 |
| 45 | 4.8.1 | Make wedding venue short list |  | 15d | 2016-01-29 | 2016-02-18 |  | 0d |  |  | Bride [50%]; Groom [50%] | 120h |  |
| 46 | 4.8.2 | Book wedding venue |  | 1d | 2016-02-19 | 2016-02-19 | 45 | 0d |  |  | Bride [20%]; Wedding venue [0.1%] | 1.6h | 3,500 |
| 47 | 4.8.3 | Wedding venue booked | milestone | 0d | 2016-02-19 | 2016-02-19 | 46 | 112d |  |  |  |  |  |
| 48 | 4.9 | **Honeymoon** |  | 30d | 2016-06-15 | 2016-07-26 |  | 0d |  |  |  | 160h | 5,000 |
| 49 | 4.9.1 | Make honeymoon destination short list |  | 20d | 2016-06-15 | 2016-07-12 | 2 | 0d |  |  | Bride [40%]; Groom [40%] | 128h |  |
| 50 | 4.9.2 | Select honeymoon destination and book honeymoon |  | 10d | 2016-07-13 | 2016-07-26 | 49 | 0d |  |  | Bride [20%]; Groom [20%]; Honeymoon cost [0.1%] | 32h | 5,000 |
| 52 | 5 | Rehearsal |  | 1d | 2016-08-16 | 2016-08-16 | 53SS-7d | 7d |  |  | Bride; Groom | 16h |  |
| 53 | 6 | Wedding day | milestone | 1d | 2016-08-25 | 2016-08-25 | 7FS+21d | 0d |  | 2016-09-01 | Bride; Groom | 16h |  |
