# SSI Wedding 14

Schedule from MS Project, 2015-12-04 to 2016-08-25, status date 2016-01-31, costs in $, A marks actual dates.

## Calendars

- Standard: Mon-Fri 08:00-12:00, 13:00-17:00; Sat-Sun off.

## Resources

| Resource | Unit | Notes |
| --- | --- | --- |
| Bride |  |  |
| Groom |  |  |
| Wedding rings | ring |  |
| Photographer |  | Jack recommends both photography and videography, but we may be restricted by budget. |
| Bridesmaid 1 |  |  |
| Bridesmaid 2 |  |  |
| Wedding venue |  |  |
| Reception venue |  |  |
| Catering |  |  |
| Flowers |  |  |
| Cake |  |  |
| Entertainment |  |  |
| Bride's attire |  |  |
| Stationery |  |  |
| Bridesmaids' attire |  |  |
| Honeymoon cost |  |  |
| Groom's attire |  |  |
| Best Man's attire |  |  |

## Schedule

| ID | WBS | Task | Type | Duration | Start | Finish | Predecessors | Complete | Remaining | Baseline start | Baseline finish | Baseline duration | Total slack | Free slack | Constraint | Resources | Work | Actual work | Cost | Baseline cost |
| --- | --- | --- | --- | --- | --- | --- | --- | --- | --- | --- | --- | --- | --- | --- | --- | --- | --- | --- | --- | --- |
| 2 | 1 | Agree budget and approach |  | 10d | 2015-12-04 A | 2015-12-17 A |  | 100% |  | 2015-12-04 | 2015-12-17 | 10d |  |  |  | Bride; Groom | 160h | 160h |  |  |
| 4 | 2 | Set wedding date |  | 1d | 2016-02-22 | 2016-02-22 | 25, 47 |  |  | 2016-02-22 | 2016-02-22 | 1d | 0d |  |  |  |  |  |  |  |
| 5 | 3 | Wedding date set | milestone | 0d | 2016-02-22 | 2016-02-22 | 4 |  |  | 2016-02-22 | 2016-02-22 |  | 40d | 0d |  |  |  |  |  |  |
| 7 | 4 | **PREPARATION PHASE** |  | 158d | 2015-12-18 A | 2016-07-26 |  | 13% | 138.11d | 2015-12-18 | 2016-07-26 | 158d | 0d |  |  |  | 1913.6h | 458h | 31,550 | 31,550 |
| 8 | 4.1 | **Attire** |  | 103d | 2016-01-08 A | 2016-05-31 | 2 | 10% | 92.21d | 2016-01-08 | 2016-05-31 | 103d | 40d |  |  |  | 404h | 32h | 7,100 | 7,100 |
| 9 | 4.1.1 | **Select and order wedding dress** |  | 93d | 2016-01-08 A | 2016-05-17 |  | 25% | 70.04d | 2016-01-08 | 2016-05-17 | 93d | 50d | 4d |  |  | 100h | 32h | 3,600 | 3,600 |
| 10 | 4.1.1.1 | Select wedding dress |  | 40d | 2016-01-08 A | 2016-03-03 |  | 50% | 20d | 2016-01-08 | 2016-03-03 | 40d | 48d | 0d |  | Bride [20%] | 64h | 32h |  |  |
| 11 | 4.1.1.2 | Order dress |  | 1d | 2016-03-22 | 2016-03-22 | 10 |  |  | 2016-03-22 | 2016-03-22 | 1d | 50d | 0d |  | Bride [50%]; Bridesmaids' attire [0.1%] | 4h |  | 3,600 | 3,600 |
| 12 | 4.1.1.3 | Measurements and fittings |  | 40d | 2016-03-23 | 2016-05-17 | 11 |  |  | 2016-03-23 | 2016-05-17 | 40d | 50d |  |  | Bride [10%] | 32h |  |  |  |
| 13 | 4.1.2 | Select and order bridesmaid dresses |  | 60d | 2016-03-01 | 2016-05-23 | 10FS-5d |  |  | 2016-03-01 | 2016-05-23 | 60d | 46d | 0d | start no earlier than 2016-03-01 | Bridesmaid 1 [20%]; Bride [10%]; Bridesmaid 2 [20%]; Bridesmaids' attire [0.1%] | 240h |  | 1,600 | 1,600 |
| 14 | 4.1.3 | Select and order groom tuxedo |  | 30d | 2016-03-23 | 2016-05-03 |  |  |  | 2016-03-23 | 2016-05-03 | 30d | 40d | 0d |  | Bride [20%]; Groom's attire [0.1%] | 48h |  | 1,100 | 1,100 |
| 15 | 4.1.4 | Select and order best man tuxedo |  | 20d | 2016-05-04 | 2016-05-31 | 14 |  |  | 2016-05-04 | 2016-05-31 | 20d | 40d |  |  | Best Man's attire; Groom [10%] | 16h |  | 800 | 800 |
| 16 | 4.1.5 | All attire ordered | milestone | 0d | 2016-05-23 | 2016-05-23 | 9, 13, 14 |  |  | 2016-05-23 | 2016-05-23 |  | 46d |  |  |  |  |  |  |  |
| 17 | 4.2 | **Guests** |  | 108d | 2015-12-18 A | 2016-05-17 | 2 | 33% | 72d | 2015-12-18 | 2016-05-17 | 108d | 50d |  |  |  | 380h | 240h | 440 | 440 |
| 18 | 4.2.1 | Make Guest List |  | 15d | 2015-12-18 A | 2016-01-07 A |  | 100% |  | 2015-12-18 | 2016-01-07 | 15d |  |  |  | Bride; Groom | 240h | 240h |  |  |
| 19 | 4.2.2 | Send out invitations |  | 20d | 2016-02-23 | 2016-03-21 | 18SS+5d, 4 |  |  | 2016-02-23 | 2016-03-21 | 20d | 0d |  |  | Groom [50%]; Stationery [0.1%] | 80h |  | 440 | 440 |
| 20 | 4.2.3 | Finalize Guest List |  | 5d | 2016-05-04 | 2016-05-10 | 19FF+15d |  |  | 2016-05-04 | 2016-05-10 | 5d | 50d | 0d |  | Bride [50%]; Groom [50%] | 40h |  |  |  |
| 21 | 4.2.4 | Guest List finalized | milestone | 0d | 2016-05-10 | 2016-05-10 | 20 |  |  | 2016-05-10 | 2016-05-10 |  | 55d |  |  |  |  |  |  |  |
| 22 | 4.2.5 | Book guest accommodation |  | 5d | 2016-05-11 | 2016-05-17 | 20 |  |  | 2016-05-11 | 2016-05-17 | 5d | 50d |  |  | Groom [50%] | 20h |  |  |  |
| 23 | 4.3 | **Reception Venue** |  | 93d | 2016-01-08 A | 2016-05-17 | 2 | 71% | 26.57d | 2016-01-08 | 2016-05-17 | 93d | 50d |  |  |  | 144h | 120h | 6,600 | 6,600 |
| 24 | 4.3.1 | Make reception venue short list |  | 15d | 2016-01-08 A | 2016-01-28 A |  | 100% |  | 2016-01-08 | 2016-01-28 | 15d |  |  |  | Bride [50%]; Groom [50%] | 120h | 120h |  |  |
| 25 | 4.3.2 | Book reception venue |  | 1d | 2016-02-19 | 2016-02-19 | 24 |  |  | 2016-02-19 | 2016-02-19 | 1d | 0d |  |  | Bride [50%]; Reception venue [0.1%] | 4h |  | 6,600 | 6,600 |
| 26 | 4.3.3 | Reception venue booked | milestone | 0d | 2016-02-19 | 2016-02-19 | 25 |  |  | 2016-02-19 | 2016-02-19 |  | 112d |  |  |  |  |  |  |  |
| 27 | 4.3.4 | Plan and finalize seating arrangements |  | 5d | 2016-05-11 | 2016-05-17 | 20 |  |  | 2016-05-11 | 2016-05-17 | 5d | 50d |  |  | Bride [50%] | 20h |  |  |  |

Notes:
- 13: Jane out of country until March 1 2016
- 19: Josh Tranter on 555-2198 is a friend of Petra and makes excellent custom invitations.

| ID | WBS | Task | Type | Duration | Start | Finish | Predecessors | Complete | Remaining | Baseline start | Baseline finish | Baseline duration | Total slack | Free slack | Constraint | Deadline | Resources | Work | Actual work | Cost | Baseline cost |
| --- | --- | --- | --- | --- | --- | --- | --- | --- | --- | --- | --- | --- | --- | --- | --- | --- | --- | --- | --- | --- | --- |
| 28 | 4.4 | **Catering** |  | 128d | 2016-01-08 A | 2016-07-05 | 2 | 11% | 113.99d | 2016-01-08 | 2016-07-05 | 128d | 15d |  |  |  |  | 240h | 36h | 4,850 | 4,850 |
| 29 | 4.4.1 | Make caterer short list |  | 23.5d | 2016-01-08 A | 2016-02-10 |  | 32% | 16d | 2016-01-08 | 2016-01-28 | 15d | 104.5d | 0d |  |  | Groom [50%]; Bride [10%] | 72h | 36h |  |  |
| 30 | 4.4.2 | Book caterer and finalize menu |  | 15d | 2016-02-10 | 2016-03-02 | 29 |  |  | 2016-01-29 | 2016-02-18 | 15d | 104.5d |  | start no earlier than 2016-01-31 |  | Bride [20%]; Groom [20%]; Catering [0.1%] | 48h |  | 4,400 | 4,400 |
| 31 | 4.4.3 | Make baker short list |  | 15d | 2016-05-25 | 2016-06-14 |  |  |  | 2016-05-25 | 2016-06-14 | 15d | 15d | 0d |  |  | Groom [50%]; Bride [10%] | 72h |  |  |  |
| 32 | 4.4.4 | Select baker and order cake |  | 15d | 2016-06-15 | 2016-07-05 | 31 |  |  | 2016-06-15 | 2016-07-05 | 15d | 15d |  |  |  | Bride [20%]; Groom [20%]; Cake [0.1%] | 48h |  | 450 | 450 |
| 33 | 4.5 | **Flowers** |  | 30d | 2016-04-13 | 2016-05-24 | 2 |  |  | 2016-04-13 | 2016-05-24 | 30d | 45d |  |  |  |  | 120h |  | 750 | 750 |
| 34 | 4.5.1 | Make florist short list |  | 15d | 2016-04-13 | 2016-05-03 |  |  |  | 2016-04-13 | 2016-05-03 | 15d | 45d | 0d |  |  | Groom [50%]; Bride [10%] | 72h |  |  |  |
| 35 | 4.5.2 | Select florist and order flowers |  | 15d | 2016-05-04 | 2016-05-24 | 34 |  |  | 2016-05-04 | 2016-05-24 | 15d | 45d |  |  |  | Bride [20%]; Groom [20%]; Flowers [0.1%] | 48h |  | 750 | 750 |
| 36 | 4.6 | **Memories** |  | 30d | 2016-03-23 | 2016-05-03 | 2 |  |  | 2016-03-23 | 2016-05-03 | 30d | 60d |  |  |  |  | 120h |  | 1,500 | 1,500 |
| 37 | 4.6.1 | Make photographer short list |  | 15d | 2016-03-23 | 2016-04-12 |  |  |  | 2016-03-23 | 2016-04-12 | 15d | 60d | 0d |  |  | Bride [50%]; Groom [10%] | 72h |  |  |  |
| 38 | 4.6.2 | Select and book photographer |  | 15d | 2016-04-13 | 2016-05-03 | 37 |  |  | 2016-04-13 | 2016-05-03 | 15d | 60d |  |  |  | Photographer [0.1%]; Bride [20%]; Groom [20%] | 48h |  | 1,500 | 1,500 |
| 39 | 4.7 | **Details** |  | 81d | 2016-02-23 | 2016-06-14 | 2 |  |  | 2016-02-23 | 2016-06-14 | 81d | 30d |  |  |  |  | 224h |  | 1,810 | 1,810 |
| 40 | 4.7.1 | Select and buy rings |  | 20d | 2016-05-18 | 2016-06-14 |  |  |  | 2016-05-18 | 2016-06-14 | 20d | 30d |  |  |  | Wedding rings [0 ring]; Bride [20%]; Groom [20%] | 64h |  | 1,000 | 1,000 |
| 41 | 4.7.2 | Select and book entertainment |  | 20d | 2016-02-23 | 2016-03-21 | 5 |  |  | 2016-02-23 | 2016-03-21 | 20d | 91d |  |  |  | Bride [50%]; Groom [20%]; Entertainment [0.1%] | 112h |  | 750 | 750 |
| 42 | 4.7.3 | Select and book transport |  | 10d | 2016-05-18 | 2016-05-31 | 5 |  |  | 2016-05-18 | 2016-05-31 | 10d | 40d |  |  |  | Bride [20%]; Groom [20%] | 32h |  |  |  |
| 43 | 4.7.4 | Register wedding and get license |  | 5d | 2016-02-23 | 2016-02-29 | 5 |  |  | 2016-02-23 | 2016-02-29 | 5d | 106d | 0d |  |  | Groom [20%]; Bride [20%] | 16h |  | 60 | 60 |
| 44 | 4.7.5 | Wedding registered and licensed | milestone | 0d | 2016-02-29 | 2016-02-29 | 43 |  |  | 2016-02-29 | 2016-02-29 |  | 106d |  |  |  |  |  |  |  |  |
| 45 | 4.8 | **Wedding Venue** |  | 16d | 2016-01-29 A | 2016-02-19 | 2 | 23% | 12.25d | 2016-01-29 | 2016-02-19 | 16d | 112d |  |  |  |  | 121.6h | 30h | 3,500 | 3,500 |
| 46 | 4.8.1 | Make wedding venue short list |  | 15d | 2016-01-29 A | 2016-02-18 |  | 25% | 11.25d | 2016-01-29 | 2016-02-18 | 15d | 0d |  |  |  | Bride [50%]; Groom [50%] | 120h | 30h |  |  |
| 47 | 4.8.2 | Book wedding venue |  | 1d | 2016-02-19 | 2016-02-19 | 46 |  |  | 2016-02-19 | 2016-02-19 | 1d | 0d |  |  |  | Bride [20%]; Wedding venue [0.1%] | 1.6h |  | 3,500 | 3,500 |
| 48 | 4.8.3 | Wedding venue booked | milestone | 0d | 2016-02-19 | 2016-02-19 | 47 |  |  | 2016-02-19 | 2016-02-19 |  | 112d |  |  |  |  |  |  |  |  |
| 49 | 4.9 | **Honeymoon** |  | 30d | 2016-06-15 | 2016-07-26 |  |  |  | 2016-06-15 | 2016-07-26 | 30d | 0d |  |  |  |  | 160h |  | 5,000 | 5,000 |
| 50 | 4.9.1 | Make honeymoon destination short list |  | 20d | 2016-06-15 | 2016-07-12 | 2 |  |  | 2016-06-15 | 2016-07-12 | 20d | 0d |  |  |  | Bride [40%]; Groom [40%] | 128h |  |  |  |
| 51 | 4.9.2 | Select honeymoon destination and book honeymoon |  | 10d | 2016-07-13 | 2016-07-26 | 50 |  |  | 2016-07-13 | 2016-07-26 | 10d | 0d |  |  |  | Bride [20%]; Groom [20%]; Honeymoon cost [0.1%] | 32h |  | 5,000 | 5,000 |
| 53 | 5 | Rehearsal |  | 1d | 2016-08-16 | 2016-08-16 | 54SS-7d |  |  | 2016-08-16 | 2016-08-16 | 1d | 7d |  |  |  | Bride; Groom | 16h |  |  |  |
| 54 | 6 | Wedding day | milestone | 1d | 2016-08-25 | 2016-08-25 | 7FS+21d |  |  | 2016-08-25 | 2016-08-25 | 1d | 0d |  | must start on 2016-08-25 | 2016-09-01 | Bride; Groom | 16h |  |  |  |
