# SimonSezIT-Project2016-Bathroom-Refit-EVA

Schedule from MS Project, 2016-01-20 to 2016-03-17, status date 2016-03-04, costs in $, A marks actual dates.

## Calendars

- Standard: Mon-Fri 08:00-12:00, 13:00-17:00; Sat-Sun off.

## Resources

| Resource | Unit | Rate | Cost per use |
| --- | --- | --- | --- |
| Electrician |  | 25 |  |
| Plumber |  | 25 |  |
| Contractor |  | 22 |  |
| Floor tiles | sq metre | 40 |  |
| Tiles | sq metre | 36 | 12 |
| Paint | litre | 7 |  |
| Bathroom equipment |  |  |  |
| Incidental Expenses |  |  |  |

## Schedule

| ID | WBS | Task | Type | Duration | Start | Finish | Predecessors | Complete | Baseline start | Baseline finish | Baseline duration | Constraint | Resources | Cost | Baseline cost | Actual cost |
| --- | --- | --- | --- | --- | --- | --- | --- | --- | --- | --- | --- | --- | --- | --- | --- | --- |
| 2 | 1 | **PLANNING PHASE** |  | 16.5d | 2016-01-20 A | 2016-02-11 A |  | 100% | 2016-01-20 | 2016-02-04 | 12d |  |  |  |  |  |
| 3 | 1.1 | **Planning** |  | 4d | 2016-01-20 A | 2016-01-25 A |  | 100% | 2016-01-20 | 2016-01-25 | 4d |  |  |  |  |  |
| 4 | 1.1.1 | Scoping |  | 2d | 2016-01-20 A | 2016-01-21 A |  | 100% | 2016-01-20 | 2016-01-21 | 2d |  |  |  |  |  |
| 5 | 1.1.2 | Select style |  | 2d | 2016-01-22 A | 2016-01-25 A | 4 | 100% | 2016-01-22 | 2016-01-25 | 2d |  |  |  |  |  |
| 6 | 1.1.3 | Decide about project manager |  | 2d | 2016-01-22 A | 2016-01-25 A | 4 | 100% | 2016-01-22 | 2016-01-25 | 2d |  |  |  |  |  |
| 7 | 1.1.4 | Check permissions required |  | 2d | 2016-01-22 A | 2016-01-25 A | 4 | 100% | 2016-01-22 | 2016-01-25 | 2d |  |  |  |  |  |
| 8 | 1.1.5 | Fix dates |  | 2d | 2016-01-22 A | 2016-01-25 A | 4 | 100% | 2016-01-22 | 2016-01-25 | 2d |  |  |  |  |  |
| 9 | 1.1.6 | Arrange temporary accommodation |  | 2d | 2016-01-22 A | 2016-01-25 A | 4 | 100% | 2016-01-22 | 2016-01-25 | 2d |  |  |  |  |  |
| 10 | 1.2 | **Contractors** |  | 14.5d | 2016-01-20 A | 2016-02-09 A |  | 100% | 2016-01-20 | 2016-02-02 | 10d |  |  |  |  |  |
| 11 | 1.2.1 | Get contractor recommendations |  | 2d | 2016-01-20 A | 2016-01-21 A |  | 100% | 2016-01-20 | 2016-01-21 | 2d |  |  |  |  |  |
| 12 | 1.2.2 | Make contractor short list |  | 2d | 2016-01-22 A | 2016-01-25 A | 11 | 100% | 2016-01-22 | 2016-01-25 | 2d |  |  |  |  |  |
| 13 | 1.2.3 | Get contractor quotations |  | 9.5d | 2016-01-26 A | 2016-02-08 A | 12, 3 | 100% | 2016-01-26 | 2016-02-01 | 5d |  |  |  |  |  |
| 14 | 1.2.4 | Appoint contractors |  | 1d | 2016-02-08 A | 2016-02-09 A | 13 | 100% | 2016-02-02 | 2016-02-02 | 1d | start no earlier than 2016-02-03 |  |  |  |  |
| 15 | 1.2.5 | Contractors appointed | milestone | 0d | 2016-02-09 A | 2016-02-09 A | 14 | 100% | 2016-02-02 | 2016-02-02 |  | start no earlier than 2016-02-03 |  |  |  |  |
| 16 | 1.3 | **Finance** |  | 3d | 2016-02-08 A | 2016-02-11 A |  | 100% | 2016-02-02 | 2016-02-04 | 3d |  |  |  |  |  |
| 17 | 1.3.1 | Estimate finance needed |  | 1d | 2016-02-08 A | 2016-02-09 A | 13 | 100% | 2016-02-02 | 2016-02-02 | 1d | start no earlier than 2016-02-03 |  |  |  |  |
| 18 | 1.3.2 | Arrange finance |  | 2d | 2016-02-09 A | 2016-02-11 A | 17 | 100% | 2016-02-03 | 2016-02-04 | 2d | start no earlier than 2016-02-03 |  |  |  |  |
| 19 | 1.3.3 | Finance arranged | milestone | 0d | 2016-02-11 A | 2016-02-11 A | 18 | 100% | 2016-02-04 | 2016-02-04 |  |  |  |  |  |  |
| 21 | 2 | **PURCHASING PHASE** |  | 7d | 2016-02-11 A | 2016-02-22 A | 2 | 100% | 2016-02-05 | 2016-02-15 | 7d |  |  | 4,824 | 4,112 | 4,824 |
| 22 | 2.1 | **Tiling** |  | 5d | 2016-02-11 A | 2016-02-18 A |  | 100% | 2016-02-05 | 2016-02-11 | 5d |  |  | 660 | 624 | 660 |
| 23 | 2.1.1 | Review available tiles |  | 3d | 2016-02-11 A | 2016-02-16 A |  | 100% | 2016-02-05 | 2016-02-09 | 3d |  |  |  |  |  |
| 24 | 2.1.2 | Select and order tiles |  | 2d | 2016-02-16 A | 2016-02-18 A | 23 | 100% | 2016-02-10 | 2016-02-11 | 2d |  | Tiles [18 sq metre] | 660 | 624 | 660 |
| 25 | 2.1.3 | Tiling delivery | milestone | 0d | 2016-02-18 A | 2016-02-18 A | 24 | 100% | 2016-02-11 | 2016-02-11 |  |  |  |  |  |  |
| 26 | 2.2 | **Flooring** |  | 5d | 2016-02-11 A | 2016-02-18 A |  | 100% | 2016-02-05 | 2016-02-11 | 5d |  |  | 480 | 432 | 480 |
| 27 | 2.2.1 | Review available flooring |  | 3d | 2016-02-11 A | 2016-02-16 A |  | 100% | 2016-02-05 | 2016-02-09 | 3d |  |  |  |  |  |
| 28 | 2.2.2 | Select and order flooring |  | 2d | 2016-02-16 A | 2016-02-18 A | 27 | 100% | 2016-02-10 | 2016-02-11 | 2d |  | Floor tiles [12 sq metre] | 480 | 432 | 480 |
| 29 | 2.2.3 | Flooring delivery | milestone | 0d | 2016-02-18 A | 2016-02-18 A | 28 | 100% | 2016-02-11 | 2016-02-11 |  |  |  |  |  |  |

| ID | WBS | Task | Type | Duration | Start | Finish | Predecessors | Complete | Remaining | Baseline start | Baseline finish | Baseline duration | Total slack | Constraint | Resources | Work | Actual work | Cost | Baseline cost | Actual cost |
| --- | --- | --- | --- | --- | --- | --- | --- | --- | --- | --- | --- | --- | --- | --- | --- | --- | --- | --- | --- | --- |
| 30 | 2.3 | **Painting** |  | 4d | 2016-02-11 A | 2016-02-17 A |  | 100% |  | 2016-02-05 | 2016-02-10 | 4d |  |  |  |  |  | 84 | 56 | 84 |
| 31 | 2.3.1 | Review paint options |  | 2d | 2016-02-11 A | 2016-02-15 A |  | 100% |  | 2016-02-05 | 2016-02-08 | 2d |  |  |  |  |  |  |  |  |
| 32 | 2.3.2 | Select and order paint |  | 2d | 2016-02-15 A | 2016-02-17 A | 31 | 100% |  | 2016-02-09 | 2016-02-10 | 2d |  |  | Paint [12 litre] |  |  | 84 | 56 | 84 |
| 33 | 2.3.3 | Paint delivery | milestone | 0d | 2016-02-17 A | 2016-02-17 A | 32 | 100% |  | 2016-02-10 | 2016-02-10 |  |  |  |  |  |  |  |  |  |
| 34 | 2.4 | **Equipment** |  | 7d | 2016-02-11 A | 2016-02-22 A |  | 100% |  | 2016-02-05 | 2016-02-15 | 7d |  |  |  |  |  | 3,600 | 3,000 | 3,600 |
| 35 | 2.4.1 | Visit bathroom showrooms |  | 2d | 2016-02-11 A | 2016-02-15 A |  | 100% |  | 2016-02-05 | 2016-02-08 | 2d |  |  |  |  |  |  |  |  |
| 36 | 2.4.2 | Select and order equipment |  | 4d | 2016-02-15 A | 2016-02-19 A | 35 | 100% |  | 2016-02-09 | 2016-02-12 | 4d |  |  | Bathroom equipment |  |  | 3,600 | 3,000 | 3,600 |
| 37 | 2.4.3 | Equipment delivery |  | 1d | 2016-02-19 A | 2016-02-22 A | 36 | 100% |  | 2016-02-15 | 2016-02-15 | 1d |  |  |  |  |  |  |  |  |
| 38 | 2.5 | All materials on site | milestone | 0d | 2016-02-22 A | 2016-02-22 A | 25, 29, 33, 37 | 100% |  | 2016-02-15 | 2016-02-15 |  |  |  |  |  |  |  |  |  |
| 40 | 3 | **IMPLEMENTATION PHASE** |  | 15.5d | 2016-02-22 A | 2016-03-14 | 21 | 51% | 7.53d | 2016-02-16 | 2016-03-01 | 11d | 0d |  |  | 208h | 96h | 4,843 | 4,843 | 2,184 |
| 41 | 3.1 | **Preparation** |  | 7d | 2016-02-22 A | 2016-03-02 A |  | 100% |  | 2016-02-16 | 2016-02-22 | 5d |  |  |  | 72h | 72h | 1,584 | 1,584 | 1,584 |
| 42 | 3.1.1 | Setup skip for waste |  | 1d | 2016-02-22 A | 2016-02-23 A |  | 100% |  | 2016-02-16 | 2016-02-16 | 1d |  |  | Contractor | 8h | 8h | 176 | 176 | 176 |
| 43 | 3.1.2 | Gut existing bathroom |  | 3d | 2016-02-23 A | 2016-02-26 A | 42 | 100% |  | 2016-02-17 | 2016-02-18 | 2d |  |  | Contractor | 16h | 16h | 352 | 352 | 352 |
| 44 | 3.1.3 | Prepare for tiling |  | 3d | 2016-02-26 A | 2016-03-02 A | 43 | 100% |  | 2016-02-19 | 2016-02-22 | 2d |  |  | Contractor | 16h | 16h | 352 | 352 | 352 |
| 45 | 3.1.4 | Prepare for flooring |  | 3d | 2016-02-26 A | 2016-03-02 A | 43 | 100% |  | 2016-02-19 | 2016-02-22 | 2d |  |  | Contractor | 16h | 16h | 352 | 352 | 352 |
| 46 | 3.1.5 | Prepare for painting |  | 3d | 2016-02-26 A | 2016-03-02 A | 43 | 100% |  | 2016-02-19 | 2016-02-22 | 2d |  |  | Contractor | 16h | 16h | 352 | 352 | 352 |
| 47 | 3.2 | **Electrical** |  | 11.5d | 2016-02-26 A | 2016-03-14 |  | 43% | 6.57d | 2016-02-19 | 2016-02-29 | 7d | 0d |  |  | 32h | 16h | 875 | 875 | 400 |
| 48 | 3.2.1 | First fix electrics |  | 3d | 2016-02-26 A | 2016-03-02 A | 43 | 100% |  | 2016-02-19 | 2016-02-22 | 2d |  |  | Electrician | 16h | 16h | 400 | 400 | 400 |
| 49 | 3.2.2 | Second fix electrics |  | 3d | 2016-03-09 | 2016-03-11 | 59, 48 |  |  | 2016-02-25 | 2016-02-26 | 2d | 0d | start no earlier than 2016-03-04 | Electrician | 16h |  | 400 | 400 |  |
| 50 | 3.2.3 | Certification |  | 1d | 2016-03-14 | 2016-03-14 | 49 |  |  | 2016-02-29 | 2016-02-29 | 1d | 0d |  |  |  |  | 75 | 75 |  |
| 51 | 3.3 | **Plumbing** |  | 9.5d | 2016-02-26 A | 2016-03-10 |  | 33% | 6.33d | 2016-02-19 | 2016-02-26 | 6d | 0d |  |  | 32h | 8h | 800 | 800 | 200 |
| 52 | 3.3.1 | First fix plumbing |  | 4d | 2016-02-26 A | 2016-03-08 | 43 | 50% | 2d | 2016-02-19 | 2016-02-22 | 2d | 0d |  | Plumber | 16h | 8h | 400 | 400 | 200 |
| 53 | 3.3.2 | Second fix plumbing |  | 2d | 2016-03-09 | 2016-03-10 | 52, 59 |  |  | 2016-02-25 | 2016-02-26 | 2d | 0d | start no earlier than 2016-03-04 | Plumber | 16h |  | 400 | 400 |  |
| 54 | 3.4 | **Tiling** |  | 2d | 2016-03-07 | 2016-03-08 |  |  |  | 2016-02-23 | 2016-02-24 | 2d | 1d |  |  | 16h |  | 352 | 352 |  |
| 55 | 3.4.1 | Fit tiles |  | 2d | 2016-03-07 | 2016-03-08 | 44 |  |  | 2016-02-23 | 2016-02-24 | 2d | 1d | start no earlier than 2016-03-04 | Contractor | 16h |  | 352 | 352 |  |

| ID | WBS | Task | Type | Duration | Start | Finish | Predecessors | Baseline start | Baseline finish | Baseline duration | Total slack | Constraint | Resources | Work | Cost | Baseline cost |
| --- | --- | --- | --- | --- | --- | --- | --- | --- | --- | --- | --- | --- | --- | --- | --- | --- |
| 56 | 3.5 | **Flooring** |  | 2d | 2016-03-07 | 2016-03-08 |  | 2016-02-23 | 2016-02-24 | 2d | 1d |  |  | 16h | 352 | 352 |
| 57 | 3.5.1 | Fit flooring |  | 2d | 2016-03-07 | 2016-03-08 | 45 | 2016-02-23 | 2016-02-24 | 2d | 1d | start no earlier than 2016-03-04 | Contractor | 16h | 352 | 352 |
| 58 | 3.6 | **Painting** |  | 2d | 2016-03-07 | 2016-03-08 |  | 2016-02-23 | 2016-02-24 | 2d | 0d |  |  | 16h | 352 | 352 |
| 59 | 3.6.1 | Paint |  | 2d | 2016-03-07 | 2016-03-08 | 46 | 2016-02-23 | 2016-02-24 | 2d | 0d | start no earlier than 2016-03-04 | Contractor | 16h | 352 | 352 |
| 60 | 3.7 | **Equipment** |  | 3d | 2016-03-10 | 2016-03-14 |  | 2016-02-26 | 2016-03-01 | 3d | 0d |  |  | 24h | 528 | 528 |
| 61 | 3.7.1 | Fit equipment |  | 3d | 2016-03-10 | 2016-03-14 | 59, 49SS+1d, 53SS+1d, 55, 57 | 2016-02-26 | 2016-03-01 | 3d | 0d |  | Contractor | 24h | 528 | 528 |
| 62 | 3.7.2 | Equipment fitted | milestone | 0d | 2016-03-14 | 2016-03-14 | 61 | 2016-03-01 | 2016-03-01 |  | 0d |  | Contractor |  |  |  |
| 64 | 4 | **COMPLETION PHASE** |  | 3d | 2016-03-15 | 2016-03-17 | 40 | 2016-03-02 | 2016-03-04 | 3d | 0d |  |  | 24h | 528 | 528 |
| 65 | 4.1 | Resolve snags |  | 2d | 2016-03-15 | 2016-03-16 |  | 2016-03-02 | 2016-03-03 | 2d | 0d |  | Contractor | 16h | 352 | 352 |
| 66 | 4.2 | Clean up |  | 1d | 2016-03-17 | 2016-03-17 | 65 | 2016-03-04 | 2016-03-04 | 1d | 0d |  | Contractor | 8h | 176 | 176 |
| 67 | 4.3 | Refit complete | milestone | 0d | 2016-03-17 | 2016-03-17 | 66 | 2016-03-04 | 2016-03-04 |  | 0d |  |  |  |  |  |
