# SimonSezIT-Project2016-Bathroom-Refit-Scheduling-Issues

Schedule from MS Project, 2016-01-20 to 2016-03-14, status date 2016-02-03, costs in $, A marks actual dates.

## Calendars

- Standard: Mon-Fri 08:00-12:00, 13:00-17:00; Sat-Sun off.

## Resources

| Resource | Unit | Rate | Cost per use |
| --- | --- | --- | --- |
| Electrician |  | 25 |  |
| Plumber |  | 25 |  |
| Contractor |  | 22 |  |
| Floor tiles | sq metre | 36 |  |
| Tiles | sq metre | 34 | 12 |
| Paint | litre | 7 |  |
| Bathroom equipment |  |  |  |
| Incidental Expenses |  |  |  |

## Schedule

| ID | WBS | Task | Type | Duration | Start | Finish | Predecessors | Complete | Remaining | Baseline start | Baseline finish | Baseline duration | Total slack | Free slack | Constraint | Resources | Cost | Baseline cost |
| --- | --- | --- | --- | --- | --- | --- | --- | --- | --- | --- | --- | --- | --- | --- | --- | --- | --- | --- |
| 2 | 1 | **PLANNING PHASE** |  | 16.5d | 2016-01-20 A | 2016-02-11 |  | 63% | 6.15d | 2016-01-20 | 2016-02-04 | 12d | -1.5d | 0d |  |  |  |  |
| 3 | 1.1 | **Planning** |  | 4d | 2016-01-20 A | 2016-01-25 A |  | 100% |  | 2016-01-20 | 2016-01-25 | 4d |  |  |  |  |  |  |
| 4 | 1.1.1 | Scoping |  | 2d | 2016-01-20 A | 2016-01-21 A |  | 100% |  | 2016-01-20 | 2016-01-21 | 2d |  |  |  |  |  |  |
| 5 | 1.1.2 | Select style |  | 2d | 2016-01-22 A | 2016-01-25 A | 4 | 100% |  | 2016-01-22 | 2016-01-25 | 2d |  |  |  |  |  |  |
| 6 | 1.1.3 | Decide about project manager |  | 2d | 2016-01-22 A | 2016-01-25 A | 4 | 100% |  | 2016-01-22 | 2016-01-25 | 2d |  |  |  |  |  |  |
| 7 | 1.1.4 | Check permissions required |  | 2d | 2016-01-22 A | 2016-01-25 A | 4 | 100% |  | 2016-01-22 | 2016-01-25 | 2d |  |  |  |  |  |  |
| 8 | 1.1.5 | Fix dates |  | 2d | 2016-01-22 A | 2016-01-25 A | 4 | 100% |  | 2016-01-22 | 2016-01-25 | 2d |  |  |  |  |  |  |
| 9 | 1.1.6 | Arrange temporary accommodation |  | 2d | 2016-01-22 A | 2016-01-25 A | 4 | 100% |  | 2016-01-22 | 2016-01-25 | 2d |  |  |  |  |  |  |
| 10 | 1.2 | **Contractors** |  | 14.5d | 2016-01-20 A | 2016-02-09 |  | 45% | 8d | 2016-01-20 | 2016-02-02 | 10d | 0.5d |  |  |  |  |  |
| 11 | 1.2.1 | Get contractor recommendations |  | 2d | 2016-01-20 A | 2016-01-21 A |  | 100% |  | 2016-01-20 | 2016-01-21 | 2d |  |  |  |  |  |  |
| 12 | 1.2.2 | Make contractor short list |  | 2d | 2016-01-22 A | 2016-01-25 A | 11 | 100% |  | 2016-01-22 | 2016-01-25 | 2d |  |  |  |  |  |  |
| 13 | 1.2.3 | Get contractor quotations |  | 9.5d | 2016-01-26 A | 2016-02-08 | 12, 3 | 26% | 7d | 2016-01-26 | 2016-02-01 | 5d | -1.5d | 0d |  |  |  |  |
| 14 | 1.2.4 | Appoint contractors |  | 1d | 2016-02-08 | 2016-02-09 | 13 |  |  | 2016-02-02 | 2016-02-02 | 1d | 0.5d | 0d | start no earlier than 2016-02-03 |  |  |  |
| 15 | 1.2.5 | Contractors appointed | milestone | 0d | 2016-02-09 | 2016-02-09 | 14 |  |  | 2016-02-02 | 2016-02-02 |  | 0.5d |  | start no earlier than 2016-02-03 |  |  |  |
| 16 | 1.3 | **Finance** |  | 3d | 2016-02-08 | 2016-02-11 |  |  |  | 2016-02-02 | 2016-02-04 | 3d | -1.5d | 0d |  |  |  |  |
| 17 | 1.3.1 | Estimate finance needed |  | 1d | 2016-02-08 | 2016-02-09 | 13 |  |  | 2016-02-02 | 2016-02-02 | 1d | -1.5d | 0d | start no earlier than 2016-02-03 |  |  |  |
| 18 | 1.3.2 | Arrange finance |  | 2d | 2016-02-09 | 2016-02-11 | 17 |  |  | 2016-02-03 | 2016-02-04 | 2d | -1.5d | 0d | start no earlier than 2016-02-03 |  |  |  |
| 19 | 1.3.3 | Finance arranged | milestone | 0d | 2016-02-11 | 2016-02-11 | 18 |  |  | 2016-02-04 | 2016-02-04 |  | -1.5d | 0d |  |  |  |  |
| 21 | 2 | **PURCHASING PHASE** |  | 7d | 2016-02-11 | 2016-02-22 | 2 |  |  | 2016-02-05 | 2016-02-15 | 7d | -1.5d | 0d |  |  | 4,112 | 4,112 |
| 22 | 2.1 | **Tiling** |  | 5d | 2016-02-11 | 2016-02-18 |  |  |  | 2016-02-05 | 2016-02-11 | 5d | 0.5d |  |  |  | 624 | 624 |
| 23 | 2.1.1 | Review available tiles |  | 3d | 2016-02-11 | 2016-02-16 |  |  |  | 2016-02-05 | 2016-02-09 | 3d | 0.5d | 0d |  |  |  |  |
| 24 | 2.1.2 | Select and order tiles |  | 2d | 2016-02-16 | 2016-02-18 | 23 |  |  | 2016-02-10 | 2016-02-11 | 2d | 0.5d | 0d |  | Tiles [18 sq metre] | 624 | 624 |
| 25 | 2.1.3 | Tiling delivery | milestone | 0d | 2016-02-18 | 2016-02-18 | 24 |  |  | 2016-02-11 | 2016-02-11 |  | 0.5d |  |  |  |  |  |
| 26 | 2.2 | **Flooring** |  | 5d | 2016-02-11 | 2016-02-18 |  |  |  | 2016-02-05 | 2016-02-11 | 5d | 0.5d |  |  |  | 432 | 432 |
| 27 | 2.2.1 | Review available flooring |  | 3d | 2016-02-11 | 2016-02-16 |  |  |  | 2016-02-05 | 2016-02-09 | 3d | 0.5d | 0d |  |  |  |  |
| 28 | 2.2.2 | Select and order flooring |  | 2d | 2016-02-16 | 2016-02-18 | 27 |  |  | 2016-02-10 | 2016-02-11 | 2d | 0.5d | 0d |  | Floor tiles [12 sq metre] | 432 | 432 |
| 29 | 2.2.3 | Flooring delivery | milestone | 0d | 2016-02-18 | 2016-02-18 | 28 |  |  | 2016-02-11 | 2016-02-11 |  | 0.5d |  |  |  |  |  |

| ID | WBS | Task | Type | Duration | Start | Finish | Predecessors | Baseline start | Baseline finish | Baseline duration | Total slack | Free slack | Resources | Work | Cost | Baseline cost |
| --- | --- | --- | --- | --- | --- | --- | --- | --- | --- | --- | --- | --- | --- | --- | --- | --- |
| 30 | 2.3 | **Painting** |  | 4d | 2016-02-11 | 2016-02-17 |  | 2016-02-05 | 2016-02-10 | 4d | 1.5d |  |  |  | 56 | 56 |
| 31 | 2.3.1 | Review paint options |  | 2d | 2016-02-11 | 2016-02-15 |  | 2016-02-05 | 2016-02-08 | 2d | 1.5d | 0d |  |  |  |  |
| 32 | 2.3.2 | Select and order paint |  | 2d | 2016-02-15 | 2016-02-17 | 31 | 2016-02-09 | 2016-02-10 | 2d | 1.5d | 0d | Paint [8 litre] |  | 56 | 56 |
| 33 | 2.3.3 | Paint delivery | milestone | 0d | 2016-02-17 | 2016-02-17 | 32 | 2016-02-10 | 2016-02-10 |  | 1.5d |  |  |  |  |  |
| 34 | 2.4 | **Equipment** |  | 7d | 2016-02-11 | 2016-02-22 |  | 2016-02-05 | 2016-02-15 | 7d | -1.5d | 0d |  |  | 3,000 | 3,000 |
| 35 | 2.4.1 | Visit bathroom showrooms |  | 2d | 2016-02-11 | 2016-02-15 |  | 2016-02-05 | 2016-02-08 | 2d | -1.5d | 0d |  |  |  |  |
| 36 | 2.4.2 | Select and order equipment |  | 4d | 2016-02-15 | 2016-02-19 | 35 | 2016-02-09 | 2016-02-12 | 4d | -1.5d | 0d | Bathroom equipment |  | 3,000 | 3,000 |
| 37 | 2.4.3 | Equipment delivery |  | 1d | 2016-02-19 | 2016-02-22 | 36 | 2016-02-15 | 2016-02-15 | 1d | -1.5d | 0d |  |  |  |  |
| 38 | 2.5 | All materials on site | milestone | 0d | 2016-02-22 | 2016-02-22 | 25, 29, 33, 37 | 2016-02-15 | 2016-02-15 |  | -1.5d | 0d |  |  |  |  |
| 40 | 3 | **IMPLEMENTATION PHASE** |  | 12d | 2016-02-22 | 2016-03-09 | 21 | 2016-02-16 | 2016-03-01 | 11d | -1.5d | 0d |  | 208h | 4,843 | 4,843 |
| 41 | 3.1 | **Preparation** |  | 7d | 2016-02-22 | 2016-03-02 |  | 2016-02-16 | 2016-02-22 | 5d | -1.5d | 0d |  | 72h | 1,584 | 1,584 |
| 42 | 3.1.1 | Setup skip for waste |  | 1d | 2016-02-22 | 2016-02-23 |  | 2016-02-16 | 2016-02-16 | 1d | -1.5d | 0d | Contractor | 8h | 176 | 176 |
| 43 | 3.1.2 | Gut existing bathroom |  | 4d | 2016-02-23 | 2016-02-29 | 42 | 2016-02-17 | 2016-02-18 | 2d | -1.5d | 0d | Contractor | 16h | 352 | 352 |
| 44 | 3.1.3 | Prepare for tiling |  | 2d | 2016-02-29 | 2016-03-02 | 43 | 2016-02-19 | 2016-02-22 | 2d | -0.5d | 0d | Contractor | 16h | 352 | 352 |
| 45 | 3.1.4 | Prepare for flooring |  | 2d | 2016-02-29 | 2016-03-02 | 43 | 2016-02-19 | 2016-02-22 | 2d | -0.5d | 0d | Contractor | 16h | 352 | 352 |
| 46 | 3.1.5 | Prepare for painting |  | 2d | 2016-02-29 | 2016-03-02 | 43 | 2016-02-19 | 2016-02-22 | 2d | -1.5d | 0d | Contractor | 16h | 352 | 352 |
| 47 | 3.2 | **Electrical** |  | 7d | 2016-02-29 | 2016-03-09 |  | 2016-02-19 | 2016-02-29 | 7d | -0.5d | 0d |  | 32h | 875 | 875 |
| 48 | 3.2.1 | First fix electrics |  | 2d | 2016-02-29 | 2016-03-02 | 43 | 2016-02-19 | 2016-02-22 | 2d | 0.5d |  | Electrician | 16h | 400 | 400 |
| 49 | 3.2.2 | Second fix electrics |  | 2d | 2016-03-04 | 2016-03-08 | 59, 48 | 2016-02-25 | 2016-02-26 | 2d | -1.5d | 0d | Electrician | 16h | 400 | 400 |
| 50 | 3.2.3 | Certification |  | 1d | 2016-03-08 | 2016-03-09 | 49 | 2016-02-29 | 2016-02-29 | 1d | -0.5d | 0d |  |  | 75 | 75 |
| 51 | 3.3 | **Plumbing** |  | 6d | 2016-02-29 | 2016-03-08 |  | 2016-02-19 | 2016-02-26 | 6d | -1.5d | 0d |  | 32h | 800 | 800 |
| 52 | 3.3.1 | First fix plumbing |  | 2d | 2016-02-29 | 2016-03-02 | 43 | 2016-02-19 | 2016-02-22 | 2d | 0.5d |  | Plumber | 16h | 400 | 400 |
| 53 | 3.3.2 | Second fix plumbing |  | 2d | 2016-03-04 | 2016-03-08 | 52, 59 | 2016-02-25 | 2016-02-26 | 2d | -1.5d | 0d | Plumber | 16h | 400 | 400 |
| 54 | 3.4 | **Tiling** |  | 2d | 2016-03-02 | 2016-03-04 |  | 2016-02-23 | 2016-02-24 | 2d | -0.5d | 0d |  | 16h | 352 | 352 |
| 55 | 3.4.1 | Fit tiles |  | 2d | 2016-03-02 | 2016-03-04 | 44 | 2016-02-23 | 2016-02-24 | 2d | -0.5d | 0d | Contractor | 16h | 352 | 352 |

| ID | WBS | Task | Type | Duration | Start | Finish | Predecessors | Baseline start | Baseline finish | Baseline duration | Total slack | Free slack | Constraint | Resources | Work | Cost | Baseline cost |
| --- | --- | --- | --- | --- | --- | --- | --- | --- | --- | --- | --- | --- | --- | --- | --- | --- | --- |
| 56 | 3.5 | **Flooring** |  | 2d | 2016-03-02 | 2016-03-04 |  | 2016-02-23 | 2016-02-24 | 2d | -0.5d | 0d |  |  | 16h | 352 | 352 |
| 57 | 3.5.1 | Fit flooring |  | 2d | 2016-03-02 | 2016-03-04 | 45 | 2016-02-23 | 2016-02-24 | 2d | -0.5d | 0d |  | Contractor | 16h | 352 | 352 |
| 58 | 3.6 | **Painting** |  | 2d | 2016-03-02 | 2016-03-04 |  | 2016-02-23 | 2016-02-24 | 2d | -1.5d | 0d |  |  | 16h | 352 | 352 |
| 59 | 3.6.1 | Paint |  | 2d | 2016-03-02 | 2016-03-04 | 46 | 2016-02-23 | 2016-02-24 | 2d | -1.5d | 0d |  | Contractor | 16h | 352 | 352 |
| 60 | 3.7 | **Equipment** |  | 3d | 2016-03-03 | 2016-03-08 |  | 2016-02-26 | 2016-03-01 | 3d | 0d |  |  |  | 24h | 528 | 528 |
| 61 | 3.7.1 | Fit equipment | manual | 3d | 2016-03-03 | 2016-03-08 | 59, 49SS+1d, 53SS+1d, 55, 57 | 2016-02-26 | 2016-03-01 | 3d |  |  |  | Contractor | 24h | 528 | 528 |
| 62 | 3.7.2 | Equipment fitted | milestone | 0d | 2016-03-08 | 2016-03-08 | 61 | 2016-03-01 | 2016-03-01 |  | 0.5d |  |  | Contractor |  |  |  |
| 64 | 4 | **COMPLETION PHASE** |  | 3d | 2016-03-09 | 2016-03-14 | 40 | 2016-03-02 | 2016-03-04 | 3d | -0.5d | 0d |  |  | 24h | 528 | 528 |
| 65 | 4.1 | Resolve snags |  | 2d | 2016-03-09 | 2016-03-11 |  | 2016-03-02 | 2016-03-03 | 2d | -0.5d | 0d |  | Contractor | 16h | 352 | 352 |
| 66 | 4.2 | Clean up |  | 1d | 2016-03-11 | 2016-03-14 | 65 | 2016-03-04 | 2016-03-04 | 1d | -0.5d | 0d |  | Contractor | 8h | 176 | 176 |
| 67 | 4.3 | Refit complete | milestone | 0d | 2016-03-11 | 2016-03-11 | 66 | 2016-03-04 | 2016-03-04 |  | -0.5d | 0d | must finish on 2016-03-11 |  |  |  |  |
