# SimonSezIT-Project2016-Exercise-05b

Schedule from MS Project, 2016-01-20 to 2016-03-04, costs in $.

## Calendars

- Standard: Mon-Fri 08:00-12:00, 13:00-17:00; Sat-Sun off.

## Resources

| Resource | Unit | Rate | Cost per use |
| --- | --- | --- | --- |
| Electrician |  | 25 |  |
| Plumber |  | 25 |  |
| Contractor |  | 22 |  |
| Floor tiles | sq metre | 36 |  |
| Tiles | sq metre | 34 | 12 |
| Paint | litre | 7 |  |

## Schedule

| ID | WBS | Task | Type | Duration | Start | Finish | Predecessors | Total slack | Free slack | Resources | Cost |
| --- | --- | --- | --- | --- | --- | --- | --- | --- | --- | --- | --- |
| 2 | 1 | **PLANNING PHASE** |  | 12d | 2016-01-20 | 2016-02-04 |  | 0d |  |  |  |
| 3 | 1.1 | **Planning** |  | 4d | 2016-01-20 | 2016-01-25 |  | 0d |  |  |  |
| 4 | 1.1.1 | Scoping |  | 2d | 2016-01-20 | 2016-01-21 |  | 0d |  |  |  |
| 5 | 1.1.2 | Select style |  | 2d | 2016-01-22 | 2016-01-25 | 4 | 0d |  |  |  |
| 6 | 1.1.3 | Decide about project manager |  | 2d | 2016-01-22 | 2016-01-25 | 4 | 0d |  |  |  |
| 7 | 1.1.4 | Check permissions required |  | 2d | 2016-01-22 | 2016-01-25 | 4 | 0d |  |  |  |
| 8 | 1.1.5 | Fix dates |  | 2d | 2016-01-22 | 2016-01-25 | 4 | 0d |  |  |  |
| 9 | 1.1.6 | Arrange temporary accommodation |  | 2d | 2016-01-22 | 2016-01-25 | 4 | 0d |  |  |  |
| 10 | 1.2 | **Contractors** |  | 10d | 2016-01-20 | 2016-02-02 |  | 0d |  |  |  |
| 11 | 1.2.1 | Get contractor recommendations |  | 2d | 2016-01-20 | 2016-01-21 |  | 0d |  |  |  |
| 12 | 1.2.2 | Make contractor short list |  | 2d | 2016-01-22 | 2016-01-25 | 11 | 0d |  |  |  |
| 13 | 1.2.3 | Get contractor quotations |  | 5d | 2016-01-26 | 2016-02-01 | 12, 3 | 0d |  |  |  |
| 14 | 1.2.4 | Appoint contractors |  | 1d | 2016-02-02 | 2016-02-02 | 13 | 2d | 0d |  |  |
| 15 | 1.2.5 | Contractors appointed | milestone | 0d | 2016-02-02 | 2016-02-02 | 14 | 2d |  |  |  |
| 16 | 1.3 | **Finance** |  | 3d | 2016-02-02 | 2016-02-04 |  | 0d |  |  |  |
| 17 | 1.3.1 | Estimate finance needed |  | 1d | 2016-02-02 | 2016-02-02 | 13 | 0d |  |  |  |
| 18 | 1.3.2 | Arrange finance |  | 2d | 2016-02-03 | 2016-02-04 | 17 | 0d |  |  |  |
| 19 | 1.3.3 | Finance arranged | milestone | 0d | 2016-02-04 | 2016-02-04 | 18 | 0d |  |  |  |
| 21 | 2 | **PURCHASING PHASE** |  | 7d | 2016-02-05 | 2016-02-15 | 2 | 0d |  |  | 1,112 |
| 22 | 2.1 | **Tiling** |  | 5d | 2016-02-05 | 2016-02-11 |  | 2d |  |  | 624 |
| 23 | 2.1.1 | Review available tiles |  | 3d | 2016-02-05 | 2016-02-09 |  | 2d | 0d |  |  |
| 24 | 2.1.2 | Select and order tiles |  | 2d | 2016-02-10 | 2016-02-11 | 23 | 2d | 0d | Tiles [18 sq metre] | 624 |
| 25 | 2.1.3 | Tiling delivery | milestone | 0d | 2016-02-11 | 2016-02-11 | 24 | 2d |  |  |  |
| 26 | 2.2 | **Flooring** |  | 5d | 2016-02-05 | 2016-02-11 |  | 2d |  |  | 432 |
| 27 | 2.2.1 | Review available flooring |  | 3d | 2016-02-05 | 2016-02-09 |  | 2d | 0d |  |  |
| 28 | 2.2.2 | Select and order flooring |  | 2d | 2016-02-10 | 2016-02-11 | 27 | 2d | 0d | Floor tiles [12 sq metre] | 432 |
| 29 | 2.2.3 | Flooring delivery | milestone | 0d | 2016-02-11 | 2016-02-11 | 28 | 2d |  |  |  |

| ID | WBS | Task | Type | Duration | Start | Finish | Predecessors | Total slack | Free slack | Resources | Work | Cost |
| --- | --- | --- | --- | --- | --- | --- | --- | --- | --- | --- | --- | --- |
| 30 | 2.3 | **Painting** |  | 4d | 2016-02-05 | 2016-02-10 |  | 3d |  |  |  | 56 |
| 31 | 2.3.1 | Review paint options |  | 2d | 2016-02-05 | 2016-02-08 |  | 3d | 0d |  |  |  |
| 32 | 2.3.2 | Select and order paint |  | 2d | 2016-02-09 | 2016-02-10 | 31 | 3d | 0d | Paint [8 litre] |  | 56 |
| 33 | 2.3.3 | Paint delivery | milestone | 0d | 2016-02-10 | 2016-02-10 | 32 | 3d |  |  |  |  |
| 34 | 2.4 | **Equipment** |  | 7d | 2016-02-05 | 2016-02-15 |  | 0d |  |  |  |  |
| 35 | 2.4.1 | Visit bathroom showrooms |  | 2d | 2016-02-05 | 2016-02-08 |  | 0d |  |  |  |  |
| 36 | 2.4.2 | Select and order equipment |  | 4d | 2016-02-09 | 2016-02-12 | 35 | 0d |  |  |  |  |
| 37 | 2.4.3 | Equipment delivery |  | 1d | 2016-02-15 | 2016-02-15 | 36 | 0d |  |  |  |  |
| 38 | 2.5 | All materials on site | milestone | 0d | 2016-02-15 | 2016-02-15 | 25, 29, 33, 37 | 0d |  |  |  |  |
| 40 | 3 | **IMPLEMENTATION PHASE** |  | 11d | 2016-02-16 | 2016-03-01 | 21 | 0d |  |  | 208h | 4,768 |
| 41 | 3.1 | **Preparation** |  | 5d | 2016-02-16 | 2016-02-22 |  | 0d |  |  | 72h | 1,584 |
| 42 | 3.1.1 | Setup skip for waste |  | 1d | 2016-02-16 | 2016-02-16 |  | 0d |  | Contractor | 8h | 176 |
| 43 | 3.1.2 | Gut existing bathroom |  | 2d | 2016-02-17 | 2016-02-18 | 42 | 0d |  | Contractor | 16h | 352 |
| 44 | 3.1.3 | Prepare for tiling |  | 2d | 2016-02-19 | 2016-02-22 | 43 | 1d | 0d | Contractor | 16h | 352 |
| 45 | 3.1.4 | Prepare for flooring |  | 2d | 2016-02-19 | 2016-02-22 | 43 | 1d | 0d | Contractor | 16h | 352 |
| 46 | 3.1.5 | Prepare for painting |  | 2d | 2016-02-19 | 2016-02-22 | 43 | 0d |  | Contractor | 16h | 352 |
| 47 | 3.2 | **Electrical** |  | 7d | 2016-02-19 | 2016-02-29 |  | 1d |  |  | 32h | 800 |
| 48 | 3.2.1 | First fix electrics |  | 2d | 2016-02-19 | 2016-02-22 | 43 | 2d |  | Electrician | 16h | 400 |
| 49 | 3.2.2 | Second fix electrics |  | 2d | 2016-02-25 | 2016-02-26 | 59, 48 | 0d |  | Electrician | 16h | 400 |
| 50 | 3.2.3 | Certification |  | 1d | 2016-02-29 | 2016-02-29 | 49 | 1d |  |  |  |  |
| 51 | 3.3 | **Plumbing** |  | 6d | 2016-02-19 | 2016-02-26 |  | 0d |  |  | 32h | 800 |
| 52 | 3.3.1 | First fix plumbing |  | 2d | 2016-02-19 | 2016-02-22 | 43 | 2d |  | Plumber | 16h | 400 |
| 53 | 3.3.2 | Second fix plumbing |  | 2d | 2016-02-25 | 2016-02-26 | 52, 59 | 0d |  | Plumber | 16h | 400 |
| 54 | 3.4 | **Tiling** |  | 2d | 2016-02-23 | 2016-02-24 |  | 1d |  |  | 16h | 352 |
| 55 | 3.4.1 | Fit tiles |  | 2d | 2016-02-23 | 2016-02-24 | 44 | 1d |  | Contractor | 16h | 352 |

| ID | WBS | Task | Type | Duration | Start | Finish | Predecessors | Total slack | Resources | Work | Cost |
| --- | --- | --- | --- | --- | --- | --- | --- | --- | --- | --- | --- |
| 56 | 3.5 | **Flooring** |  | 2d | 2016-02-23 | 2016-02-24 |  | 1d |  | 16h | 352 |
| 57 | 3.5.1 | Fit flooring |  | 2d | 2016-02-23 | 2016-02-24 | 45 | 1d | Contractor | 16h | 352 |
| 58 | 3.6 | **Painting** |  | 2d | 2016-02-23 | 2016-02-24 |  | 0d |  | 16h | 352 |
| 59 | 3.6.1 | Paint |  | 2d | 2016-02-23 | 2016-02-24 | 46 | 0d | Contractor | 16h | 352 |
| 60 | 3.7 | **Equipment** |  | 3d | 2016-02-26 | 2016-03-01 |  | 0d |  | 24h | 528 |
| 61 | 3.7.1 | Fit equipment |  | 3d | 2016-02-26 | 2016-03-01 | 59, 49SS+1d, 53SS+1d, 55, 57 | 0d | Contractor | 24h | 528 |
| 62 | 3.7.2 | Equipment fitted | milestone | 0d | 2016-03-01 | 2016-03-01 | 61 | 0d | Contractor |  |  |
| 64 | 4 | **COMPLETION PHASE** |  | 3d | 2016-03-02 | 2016-03-04 | 40 | 0d |  | 24h | 528 |
| 65 | 4.1 | Resolve snags |  | 2d | 2016-03-02 | 2016-03-03 |  | 0d | Contractor | 16h | 352 |
| 66 | 4.2 | Clean up |  | 1d | 2016-03-04 | 2016-03-04 | 65 | 0d | Contractor | 8h | 176 |
| 67 | 4.3 | Refit complete | milestone | 0d | 2016-03-04 | 2016-03-04 | 66 | 0d |  |  |  |
