# SimonSezIT-Project2016-Exercise-09b

Schedule from MS Project, 2016-02-15 to 2016-02-26, 12 hours a day, costs in $.

## Calendars

- Building: Mon-Fri 07:00-13:00, 14:00-20:00; Sat-Sun off. Exceptions (off unless hours are given): 2016-02-20 to 2016-02-21 09:00-13:00, 14:00-18:00 (Dispensation).
- Building Quiet Work: Mon-Fri 09:00-13:00, 14:00-18:00; Sat-Sun off. Exceptions (off unless hours are given): 2016-02-20 to 2016-02-21 09:00-13:00, 14:00-18:00 (Dispensation).

## Resources

| Resource | Rate |
| --- | --- |
| Darryl Petrides | 24 |
| Jenny Taylor | 24 |
| Sarah Otungo | 22 |
| Max De Bruyne | 22 |

## Schedule

| ID | WBS | Task | Duration | Start | Finish | Predecessors | Total slack | Free slack | Calendar | Resources | Work | Cost |
| --- | --- | --- | --- | --- | --- | --- | --- | --- | --- | --- | --- | --- |
| 2 | 1 | Mark out site | 2d | 2016-02-15 | 2016-02-16 |  | 0.17d |  |  | Sarah Otungo | 24h | 528 |
| 3 | 2 | Prepare equipment | 1d | 2016-02-15 | 2016-02-15 |  | 0.17d | 0d |  | Darryl Petrides; Max De Bruyne | 24h | 552 |
| 4 | 3 | Setup health and safety | 1d | 2016-02-16 | 2016-02-16 | 3 | 0.17d |  |  | Darryl Petrides; Max De Bruyne | 24h | 552 |
| 5 | 4 | Manage office setup | 2d | 2016-02-15 | 2016-02-16 |  | 10.83d |  |  | Jenny Taylor | 24h | 576 |
| 7 | 5 | Drill and clear | 4d | 2016-02-17 | 2016-02-22 | 2, 4 | 0d |  | Building Quiet Work | Jenny Taylor; Max De Bruyne | 96h | 2,208 |
| 9 | 6 | Surface | 2d | 2016-02-22 | 2016-02-24 | 7 | 0d |  |  | Jenny Taylor | 24h | 576 |
| 10 | 7 | Edges and paving | 2.83d | 2016-02-22 | 2016-02-25 | 7 | 0d |  |  | Darryl Petrides; Max De Bruyne | 48h | 1,104 |
| 12 | 8 | Finish and clear site | 1d | 2016-02-25 | 2016-02-26 | 9FS+1d, 10 | 0d |  |  | Darryl Petrides; Max De Bruyne; Jenny Taylor | 36h | 840 |
